# FMPS Demo

Schedule from a web Gantt chart, 2025-10-27 to 2026-01-27.
Saturdays and Sundays are off

## Schedule

| ID | WBS | Task | Type | Duration | Start | Finish | Predecessors | Status |
| --- | --- | --- | --- | --- | --- | --- | --- | --- |
| 2 | 1 | Architect Design |  | 12d | 2025-10-27 | 2025-11-11 |  |  |
| 3 | 2 | Hardware architect design |  | 7d | 2025-11-06 | 2025-11-14 |  |  |
| 4 | 3 | Power Unit Evaluate |  | 7d | 2025-11-10 | 2025-11-18 |  |  |
| 5 | 4 | Signal Amp & Isolation |  | 8d | 2025-11-19 | 2025-11-28 |  |  |
| 6 | 5 | Protect & Main Switch Design |  | 8d | 2025-11-19 | 2025-11-28 |  |  |
| 7 | 6 | **PLC Driver evaluate Ti AFE032** |  | 20d | 2025-11-10 | 2025-12-05 |  |  |
| 8 | 6.1 | Material purchuse |  | 8d | 2025-11-10 | 2025-11-19 |  |  |
| 9 | 6.2 | JLC PCB&PCBA Sample |  | 10d | 2025-11-13 | 2025-11-26 |  | waiting |
| 10 | 6.3 | Signal generate & sample |  | 7d | 2025-11-27 | 2025-12-05 | 9 | waiting |
| 11 | 7 | **Electric Design** |  | 30d | 2025-11-17 | 2025-12-26 | 3 | waiting |
| 12 | 7.1 | Schematic Design |  | 10d | 2025-11-17 | 2025-11-28 |  | waiting |
| 13 | 7.2 | Material Prepare |  | 20d | 2025-11-24 | 2025-12-19 |  | waiting |
| 14 | 7.3 | Layout |  | 5d | 2025-12-01 | 2025-12-05 | 12 | waiting |
| 15 | 7.4 | PCBA Build |  | 15d | 2025-12-08 | 2025-12-26 | 14 | waiting |
| 16 | 8 | **Mechanical Design** |  | 30d | 2025-11-24 | 2026-01-02 |  |  |
| 17 | 8.1 | ID |  | 5d | 2025-11-24 | 2025-11-28 |  |  |
| 18 | 8.2 | 3D Draw |  | 15d | 2025-12-01 | 2025-12-19 | 17 | waiting |
| 19 | 8.3 | 3D Print Prototype |  | 10d | 2025-12-22 | 2026-01-02 | 18 | waiting |
| 20 | 9 | **Firmware Design** |  | 53d | 2025-11-12 | 2026-01-23 | 2 | waiting |
| 21 | 9.1 | **FSK Generate & Sample Verification** |  | 20d | 2025-11-12 | 2025-12-09 |  | waiting |
| 22 | 9.1.1 | FSK generate & cop to power line |  | 10d | 2025-11-12 | 2025-11-25 |  | waiting |
| 23 | 9.1.2 | FSK signal sampling |  | 10d | 2025-11-26 | 2025-12-09 | 22 | waiting |
| 24 | 9.2 | RCD Protect |  | 5d | 2025-12-10 | 2025-12-16 | 21 | waiting |
| 25 | 9.3 | Fault Detection |  | 15d | 2025-12-17 | 2026-01-06 | 24 | waiting |
| 26 | 9.4 | Integration Develop & Test |  | 13d | 2026-01-07 | 2026-01-23 | 25 | waiting |
| 27 | 10 | Demo Show | fixed start | 2d | 2026-01-26 | 2026-01-27 |  | waiting |
